# 亲情电话应用端软件

Schedule from a web Gantt chart, 2024-12-23 to 2025-03-19.
Sundays are off

## Schedule

| ID | WBS | Task | Duration | Start | Finish | Predecessors | inPeople | Status |
| --- | --- | --- | --- | --- | --- | --- | --- | --- |
| 2 | 1 | **需求** | 11d | 2024-12-23 | 2025-01-03 |  |  |  |
| 3 | 1.1 | 需求分析与原型设计 | 5d | 2024-12-23 | 2024-12-27 |  | 邓振祥 |  |
| 4 | 1.2 | 原型评审与修订 | 6d | 2024-12-30 | 2025-01-04 | 3 | 邓振祥 | waiting |
| 5 | 2 | **设计** | 8d | 2025-01-07 | 2025-01-15 |  |  |  |
| 6 | 2.1 | MQTT协议设计与评审 | 3d | 2025-01-07 | 2025-01-09 | 4 | 邓振祥 | waiting |
| 7 | 2.2 | 公众号H5与WEB端构架与UI选型 | 1d | 2025-01-10 | 2025-01-10 | 6 |  | waiting |
| 8 | 2.3 | 数据库设计 | 2d | 2025-01-11 | 2025-01-13 | 7 | 邓振祥 | waiting |
| 9 | 2.4 | 整体技术框架搭建(前后端） | 2d | 2025-01-14 | 2025-01-15 | 8 | 邓振祥 | waiting |
| 10 | 3 | **开发与联调** | 42d | 2025-01-16 | 2025-03-05 |  |  |  |
| 11 | 3.1 | **服务商前后端开发（Web）** | 12d | 2025-01-16 | 2025-01-29 |  | 邓振祥,何青 |  |
| 12 | 3.1.1 | 首页看板 | 3d | 2025-01-16 | 2025-01-18 | 9 |  | waiting |
| 13 | 3.1.2 | 配置：学校、话机、套餐管理 | 3d | 2025-01-20 | 2025-01-22 | 12 |  | waiting |
| 14 | 3.1.3 | 数据：学生注册、交易流水、通话记录 | 3d | 2025-01-23 | 2025-01-25 | 13 |  | waiting |
| 15 | 3.1.4 | 统计分析：收入统计、学生注册统计、设备通话统计 | 3d | 2025-01-27 | 2025-01-29 | 14 |  | waiting |
| 16 | 3.2 | **平台管理前后端开发（Web）** | 4d | 2025-01-30 | 2025-02-03 |  | 邓振祥,何青 |  |
| 17 | 3.2.1 | 首页看板 | 2d | 2025-01-30 | 2025-01-31 | 15 |  | waiting |
| 18 | 3.2.2 | 服务商管理 | 2d | 2025-02-01 | 2025-02-03 | 17 |  | waiting |
| 19 | 3.3 | **公众号与家长端（H5）开发** | 16d | 2025-02-04 | 2025-02-21 |  | 邓振祥,何青 |  |
| 20 | 3.3.1 | 公众号页 面开发 | 1d | 2025-02-04 | 2025-02-04 | 18 |  | waiting |
| 21 | 3.3.2 | 家长登录与 注册、购买套餐 | 3d | 2025-02-05 | 2025-02-07 | 20 |  | waiting |
| 22 | 3.3.3 | 家长首页 | 2d | 2025-02-08 | 2025-02-10 | 21 |  | waiting |
| 23 | 3.3.4 | 留言 | 3d | 2025-02-11 | 2025-02-13 | 22 |  | waiting |
| 24 | 3.3.5 | 联系人管理 | 2d | 2025-02-14 | 2025-02-15 | 23 |  | waiting |
| 25 | 3.3.6 | 已购套餐管理 | 2d | 2025-02-17 | 2025-02-18 | 24 |  | waiting |
| 26 | 3.3.7 | 通话记录 | 1d | 2025-02-19 | 2025-02-19 | 25 |  | waiting |
| 27 | 3.3.8 | 学生信息管理 | 1d | 2025-02-20 | 2025-02-20 | 26 |  | waiting |
| 28 | 3.3.9 | 我的信息管理 | 1d | 2025-02-21 | 2025-02-21 | 27 |  | waiting |
| 29 | 3.4 | 后台与前端联调 | 5d | 2025-02-22 | 2025-02-27 | 28 | 邓振祥,何青 | waiting |
| 30 | 3.5 | 与设备端联调 | 5d | 2025-02-28 | 2025-03-05 | 29 | 邓振祥,胡钦仁 | waiting |

| ID | WBS | Task | Duration | Start | Finish | Predecessors | inPeople | Status |
| --- | --- | --- | --- | --- | --- | --- | --- | --- |
| 31 | 4 | **测试** | 10d | 2025-03-06 | 2025-03-17 |  |  |  |
| 32 | 4.1 | 首轮测试与BUG修复 | 5d | 2025-03-06 | 2025-03-11 | 30 | 测试部 | waiting |
| 33 | 4.2 | 第二轮测试与BUG修复 | 5d | 2025-03-12 | 2025-03-17 | 32 | 测试部 | waiting |
| 34 | 5 | **发布** | 2d | 2025-03-18 | 2025-03-19 |  |  |  |
| 35 | 5.1 | 文档准备 | 1d | 2025-03-18 | 2025-03-18 | 33 | 产品部 | waiting |
| 36 | 5.2 | 生产环境部署 | 1d | 2025-03-19 | 2025-03-19 | 35 | 邓振祥 | waiting |
